# 软工实验项目

Schedule from MS Project, 2017-03-10 to 2017-06-24, A marks actual dates.

## Calendars

- 标准: Mon-Fri 08:00-12:00, 13:00-17:00; Sat-Sun off.

## Resources

| Resource |
| --- |
| 陈伟民 |
| 付强 |
| 李恬霖 |
| 曹进 |

## Schedule

| ID | WBS | Task | Type | Duration | Start | Finish | Predecessors | Complete | Actual finish | Baseline 1 start | Baseline 1 finish | Resources | Work | Actual work |
| --- | --- | --- | --- | --- | --- | --- | --- | --- | --- | --- | --- | --- | --- | --- |
| 1 | 1 | **上课** |  | 1d | 2017-03-10 A | 2017-03-10 A |  | 100% |  | 2017-03-10 | 2017-03-10 |  | 8h | 8h |
| 2 | 1.1 | 组队 | manual | 1d | 2017-03-10 A | 2017-03-10 A |  | 100% |  | 2017-03-10 | 2017-03-10 | 曹进 [10%]; 陈伟民 [10%]; 付强 [10%]; 李恬霖 [10%] | 3.2h | 3.2h |
| 3 | 1.2 | 分配任务，调研项目 | manual | 1d | 2017-03-10 A | 2017-03-10 A |  | 100% |  | 2017-03-10 | 2017-03-10 | 曹进 [15%]; 陈伟民 [15%]; 付强 [15%]; 李恬霖 [15%] | 4.8h | 4.8h |
| 4 | 2 | **项目计划书拟定实验** |  | 5d | 2017-03-12 A | 2017-03-17 A |  | 100% |  | 2017-03-12 | 2017-03-17 |  | 80h | 80h |
| 5 | 2.1 | **项目确定以及介绍** |  | 2d | 2017-03-12 A | 2017-03-13 A | 3 | 100% |  | 2017-03-12 | 2017-03-13 |  | 40h | 40h |
| 6 | 2.1.1 | **项目调研** |  | 2d | 2017-03-12 A | 2017-03-13 A | 3 | 100% |  | 2017-03-12 | 2017-03-13 |  | 32h | 32h |
| 7 | 2.1.1.1 | 调研Torch平台 | manual | 2d | 2017-03-12 A | 2017-03-13 A |  | 100% |  | 2017-03-12 | 2017-03-13 | 陈伟民 [50%] | 8h | 8h |
| 8 | 2.1.1.2 | 调研node.js | manual | 2d | 2017-03-12 A | 2017-03-13 A |  | 100% |  | 2017-03-12 | 2017-03-13 | 李恬霖 [50%] | 8h | 8h |
| 9 | 2.1.1.3 | 学习github及软件安装 | manual | 2d | 2017-03-12 A | 2017-03-13 A |  | 100% |  | 2017-03-12 | 2017-03-13 | 付强 [50%] | 8h | 8h |
| 10 | 2.1.1.4 | 学习Microsoft Project及软件安装 | manual | 2d | 2017-03-12 A | 2017-03-13 A |  | 100% |  | 2017-03-12 | 2017-03-13 | 曹进 [50%] | 8h | 8h |
| 11 | 2.1.2 | 选题会议 | manual | 1d | 2017-03-13 A | 2017-03-13 A | 6 | 100% |  | 2017-03-13 | 2017-03-13 | 曹进 [25%]; 陈伟民 [25%]; 付强 [25%]; 李恬霖 [25%] | 8h | 8h |
| 12 | 2.2 | **项目计划书** |  | 4d | 2017-03-14 A | 2017-03-17 A | 11 | 100% |  | 2017-03-14 | 2017-03-17 |  | 32h | 32h |
| 13 | 2.2.1 | 撰写引言 | manual | 4d | 2017-03-14 A | 2017-03-17 A |  | 100% |  | 2017-03-14 | 2017-03-17 | 陈伟民 [25%] | 8h | 8h |
| 14 | 2.2.2 | 项目概述 | manual | 4d | 2017-03-14 A | 2017-03-17 A |  | 100% |  | 2017-03-14 | 2017-03-17 | 李恬霖 [25%] | 8h | 8h |
| 15 | 2.2.3 | 目的及成果 | manual | 4d | 2017-03-14 A | 2017-03-17 A |  | 100% |  | 2017-03-14 | 2017-03-17 | 付强 [25%] | 8h | 8h |
| 16 | 2.2.4 | mpp学习与使用 | manual | 4d | 2017-03-14 A | 2017-03-17 A |  | 100% |  | 2017-03-14 | 2017-04-17 | 曹进 [25%] | 8h | 8h |
| 17 | 2.3 | 上课 | manual | 1d | 2017-03-17 A | 2017-03-17 A |  | 100% |  | 2017-03-17 | 2017-03-17 | 曹进 [25%]; 陈伟民 [25%]; 付强 [25%]; 李恬霖 [25%] | 8h | 8h |
| 18 | 3 | **项目需求编写实验** |  | 5d | 2017-03-20 A | 2017-03-24 A |  | 100% |  | 2017-03-20 | 2017-03-24 |  | 64h | 64h |
| 19 | 3.1 | **软件需求分析** |  | 5d | 2017-03-20 A | 2017-03-24 |  | 100% | 2017-03-23 | 2017-03-20 | 2017-03-24 |  | 56h | 56h |
| 20 | 3.1.1 | 软件模块分析 | manual | 1d | 2017-03-20 A | 2017-03-20 A | 12 | 100% |  | 2017-03-20 | 2017-03-20 | 曹进 [25%] | 2h | 2h |
| 21 | 3.1.2 | 测试需求分析 | manual | 1d | 2017-03-20 A | 2017-03-20 A | 12 | 100% |  | 2017-03-20 | 2017-03-20 | 李恬霖 [25%] | 2h | 2h |
| 22 | 3.1.3 | 软工规范分析 | manual | 1d | 2017-03-20 A | 2017-03-20 A | 12 | 100% |  | 2017-03-20 | 2017-03-20 | 付强 [25%] | 2h | 2h |
| 23 | 3.1.4 | 扩展功能分析 | manual | 1d | 2017-03-20 A | 2017-03-20 A | 12 | 100% |  | 2017-03-20 | 2017-03-20 | 陈伟民 [25%] | 2h | 2h |
| 24 | 3.1.5 | 每周会议 | manual | 1d | 2017-03-20 A | 2017-03-20 A | 20, 21, 22, 23 | 100% |  | 2017-03-20 | 2017-03-20 | 曹进 [25%]; 陈伟民 [25%]; 付强 [25%]; 李恬霖 [25%] | 8h | 8h |
| 25 | 3.1.6 | 测试需求分析 | manual | 1d | 2017-03-21 A | 2017-03-21 A | 24 | 100% |  | 2017-03-20 | 2017-03-20 | 陈伟民 [25%]; 付强 [25%]; 李恬霖 [25%]; 曹进 [25%] | 8h | 8h |
| 26 | 3.1.7 | 软工规范分析 | manual | 1d | 2017-03-21 A | 2017-03-21 A | 24 | 100% |  | 2017-03-20 | 2017-03-20 | 陈伟民 [25%]; 付强 [25%]; 李恬霖 [25%]; 曹进 [25%] | 8h | 8h |
| 27 | 3.1.8 | 需求分析会议 | manual | 1d | 2017-03-22 A | 2017-03-22 A | 24 | 100% |  | 2017-03-22 | 2017-03-22 | 陈伟民 [25%]; 付强 [25%]; 李恬霖 [25%]; 曹进 [25%] | 8h | 8h |
| 28 | 3.1.9 | 软件模块分析 | manual | 2d | 2017-03-22 A | 2017-03-23 A | 25, 26, 27 | 100% |  | 2017-03-22 | 2017-03-23 | 陈伟民 [25%]; 付强 [25%]; 李恬霖 [25%]; 曹进 [25%] | 16h | 16h |
| 29 | 3.2 | 上课 | manual | 1d | 2017-03-24 A | 2017-03-24 A |  | 100% |  | 2017-03-24 | 2017-03-24 | 曹进 [25%]; 陈伟民 [25%]; 付强 [25%]; 李恬霖 [25%] | 8h | 8h |

| ID | WBS | Task | Type | Duration | Start | Finish | Predecessors | Complete | Actual start | Actual finish | Baseline 1 start | Baseline 1 finish | Resources | Work | Actual work |
| --- | --- | --- | --- | --- | --- | --- | --- | --- | --- | --- | --- | --- | --- | --- | --- |
| 30 | 4 | **项目需求评审实验** |  | 4d | 2017-03-25 A | 2017-03-30 A |  | 100% |  |  | 2017-03-25 | 2017-03-31 |  | 112h | 112h |
| 31 | 4.1 | **软件需求评审** |  | 2d | 2017-03-25 A | 2017-03-27 | 29 | 100% |  | 2017-03-25 | 2017-03-25 | 2017-03-27 |  | 72h | 72h |
| 32 | 4.1.1 | 修改软件模块需求 | manual | 1d | 2017-03-25 A | 2017-03-25 A |  | 100% |  |  | 2017-03-25 | 2017-03-25 | 曹进 [50%]; 陈伟民 [50%]; 付强 [50%]; 李恬霖 [50%] | 16h | 16h |
| 33 | 4.1.2 | 修改测试需求 | manual | 1d | 2017-03-25 A | 2017-03-25 A |  | 100% |  |  | 2017-03-25 | 2017-03-25 | 陈伟民 [50%]; 付强 [50%]; 李恬霖 [50%]; 曹进 [50%] | 16h | 16h |
| 34 | 4.1.3 | 修改软工规范需求 | manual | 1d | 2017-03-25 A | 2017-03-25 A |  | 100% |  |  | 2017-03-25 | 2017-03-25 | 陈伟民 [50%]; 付强 [50%]; 李恬霖 [50%]; 曹进 [50%] | 16h | 16h |
| 35 | 4.1.4 | 修改扩展功能需求 | manual | 1d | 2017-03-25 A | 2017-03-25 A |  | 100% |  |  | 2017-03-25 | 2017-03-25 | 陈伟民 [50%]; 付强 [50%]; 李恬霖 [50%]; 曹进 [50%] | 16h | 16h |
| 36 | 4.1.5 | 需求评审会议 | manual | 1d | 2017-03-25 A | 2017-03-25 A |  | 100% |  |  | 2017-03-25 | 2017-03-25 | 陈伟民 [25%]; 付强 [25%]; 李恬霖 [25%]; 曹进 [25%] | 8h | 8h |
| 37 | 4.2 | **软件需求评审** |  | 2d | 2017-03-27 A | 2017-03-28 A |  | 100% |  |  | 2017-03-27 | 2017-03-28 |  | 16h | 16h |
| 38 | 4.2.1 | 内部评审功能需求 | manual | 1d | 2017-03-27 A | 2017-03-27 A |  | 100% |  |  | 2017-03-27 | 2017-03-27 | 付强 [25%] | 2h | 2h |
| 39 | 4.2.2 | 内部评审非功能需求 | manual | 1d | 2017-03-27 A | 2017-03-27 A |  | 100% |  |  | 2017-03-27 | 2017-03-27 | 李恬霖 [25%] | 2h | 2h |
| 40 | 4.2.3 | 内部评审用例图和RUCM | manual | 1d | 2017-03-27 A | 2017-03-27 A |  | 100% |  |  | 2017-03-27 | 2017-03-27 | 曹进 [25%] | 2h | 2h |
| 41 | 4.2.4 | 修改软件需求说明书 | manual | 1d | 2017-03-27 A | 2017-03-27 A |  | 100% |  |  | 2017-03-27 | 2017-03-27 | 陈伟民 [25%] | 2h | 2h |
| 42 | 4.2.5 | 内部评审功能需求 | manual | 1d | 2017-03-28 A | 2017-03-28 A |  | 100% |  |  | 2017-03-28 | 2017-03-28 | 付强 [25%] | 2h | 2h |
| 43 | 4.2.6 | 内部评审非功能需求 | manual | 1d | 2017-03-28 A | 2017-03-28 A |  | 100% |  |  | 2017-03-28 | 2017-03-28 | 李恬霖 [25%] | 2h | 2h |
| 44 | 4.2.7 | 内部评审用例图和RUCM | manual | 1d | 2017-03-28 A | 2017-03-28 A |  | 100% |  |  | 2017-03-28 | 2017-03-28 | 曹进 [25%] | 2h | 2h |
| 45 | 4.2.8 | 修改软件需求说明书 | manual | 1d | 2017-03-28 A | 2017-03-28 A |  | 100% |  |  | 2017-03-28 | 2017-03-28 | 陈伟民 [25%] | 2h | 2h |
| 46 | 4.3 | **软件需求组间评审** |  | 1d | 2017-03-29 A | 2017-03-29 A | 37 | 100% |  |  | 2017-03-29 | 2017-03-29 |  | 8h | 8h |
| 47 | 4.3.1 | 讨论协商检查单 | manual | 1d | 2017-03-29 A | 2017-03-29 A |  | 100% |  |  | 2017-03-29 | 2017-03-29 | 陈伟民 [25%]; 付强 [25%]; 李恬霖 [25%]; 曹进 [25%] | 8h | 8h |
| 48 | 4.4 | 需求分析说明书改进 | manual | 1d | 2017-03-30 A | 2017-03-30 A | 46 | 100% |  |  | 2017-03-30 | 2017-03-30 | 付强 [50%]; 李恬霖 [50%]; 曹进 [50%]; 陈伟民 [50%] | 16h | 16h |
| 49 | 5 | **项目需求修改** |  | 6d | 2017-04-03 | 2017-04-10 | 48 | 100% | 2017-04-05 | 2017-04-09 | 2017-04-03 | 2017-04-10 |  | 80h | 80h |
| 50 | 5.1 | **修改需求分析说明书** |  | 2d | 2017-04-05 A | 2017-04-06 |  | 100% |  | 2017-04-05 | 2017-04-05 | 2017-04-06 |  | 32h | 32h |
| 51 | 5.1.1 | 修改用例图、修改文件读取数据RUCM | manual | 1d | 2017-04-05 A | 2017-04-05 A |  | 100% |  |  | 2017-04-05 | 2017-04-05 | 曹进 [25%] | 2h | 2h |
| 52 | 5.1.2 | 修改导入工具包RUCM、修改定义神经网络模型RUCM | manual | 1d | 2017-04-05 A | 2017-04-05 A |  | 100% |  |  | 2017-04-05 | 2017-04-05 | 曹进 [25%] | 2h | 2h |
| 53 | 5.1.3 | 修改训练网络RUCM、修改随机生成数据RUCM | manual | 1d | 2017-04-05 A | 2017-04-05 A |  | 100% |  |  | 2017-04-05 | 2017-04-05 | 曹进 [25%] | 2h | 2h |
| 54 | 5.1.4 | 修改测试网络RUCM、更新project | manual | 1d | 2017-04-05 A | 2017-04-05 A |  | 100% |  |  | 2017-04-05 | 2017-04-05 | 曹进 [25%] | 2h | 2h |
| 55 | 5.1.5 | 增加运行需求、调整非功能性需求及文档格式 | manual | 1d | 2017-04-05 A | 2017-04-05 A |  | 100% |  |  | 2017-04-05 | 2017-04-05 | 李恬霖 [50%] | 4h | 4h |
| 56 | 5.1.6 | 修改、调整功能性需求 | manual | 1d | 2017-04-05 A | 2017-04-05 A |  | 100% |  |  | 2017-04-05 | 2017-04-05 | 李恬霖 [50%] | 4h | 4h |
| 57 | 5.1.7 | 审查文档格式并调整、文档备份并更新到github | manual | 1d | 2017-04-05 A | 2017-04-05 A |  | 100% |  |  | 2017-04-05 | 2017-04-05 | 付强 [50%] | 4h | 4h |
| 58 | 5.1.8 | 检查非功能性需求并与组员讨论修改 | manual | 1d | 2017-04-05 A | 2017-04-05 A |  | 100% |  |  | 2017-04-05 | 2017-04-05 | 付强 [50%] | 4h | 4h |
| 59 | 5.1.9 | 任务分配、审查文档内容并与小组成员沟通、调整术语 | manual | 1d | 2017-04-05 A | 2017-04-05 A |  | 100% |  |  | 2017-04-05 | 2017-04-05 | 陈伟民 | 8h | 8h |

| ID | WBS | Task | Type | Duration | Start | Finish | Predecessors | Complete | Actual finish | Baseline 1 start | Baseline 1 finish | Constraint | Resources | Work | Actual work |
| --- | --- | --- | --- | --- | --- | --- | --- | --- | --- | --- | --- | --- | --- | --- | --- |
| 60 | 5.2 | **整理文档** |  | 1d | 2017-04-06 A | 2017-04-06 A | 50 | 100% |  | 2017-04-06 | 2017-04-06 |  |  | 16h | 16h |
| 61 | 5.2.1 | 更新project、整理会议记录和project学习 | manual | 1d | 2017-04-06 A | 2017-04-06 A |  | 100% |  | 2017-04-06 | 2017-04-06 |  | 曹进 [25%] | 2h | 2h |
| 62 | 5.2.2 | 整理评审记录、文档整理以及github维护 | manual | 1d | 2017-04-06 A | 2017-04-06 A |  | 100% |  | 2017-04-06 | 2017-04-06 |  | 付强 [25%] | 2h | 2h |
| 63 | 5.2.3 | 整理课堂记录、Torch平台学习和神经网络学习 | manual | 1d | 2017-04-06 A | 2017-04-06 A |  | 100% |  | 2017-04-06 | 2017-04-06 |  | 李恬霖 [25%] | 2h | 2h |
| 64 | 5.2.4 | 任务分配、组织讨论项目问题和Torch平台学习交流 | manual | 1d | 2017-04-06 A | 2017-04-06 A |  | 100% |  | 2017-04-06 | 2017-04-06 |  | 陈伟民 [25%] | 2h | 2h |
| 65 | 5.2.5 | Torch平台学习和神经网络学习 | manual | 1d | 2017-04-06 A | 2017-04-06 A |  | 100% |  | 2017-04-06 | 2017-04-06 |  | 曹进 [25%]; 陈伟民 [25%]; 付强 [25%]; 李恬霖 [25%] | 8h | 8h |
| 66 | 5.3 | **项目知识学习** |  | 1d | 2017-04-07 A | 2017-04-07 A | 60 | 100% |  | 2017-04-07 | 2017-04-07 |  |  | 8h | 8h |
| 67 | 5.3.1 | Torch平台源码学习和神经网络学习 | manual | 1d | 2017-04-07 A | 2017-04-07 A |  | 100% |  | 2017-04-07 | 2017-04-07 |  | 李恬霖 [25%] | 2h | 2h |
| 68 | 5.3.2 | 任务分配和Torch平台源码学习和神经网络学习 | manual | 1d | 2017-04-07 A | 2017-04-07 A |  | 100% |  | 2017-04-07 | 2017-04-07 |  | 陈伟民 [25%] | 2h | 2h |
| 69 | 5.3.3 | Torch平台源码学习和神经网络学习、project学习和更新 | manual | 1d | 2017-04-07 A | 2017-04-07 A |  | 100% |  | 2017-04-07 | 2017-04-07 |  | 曹进 [25%] | 2h | 2h |
| 70 | 5.3.4 | Torch平台源码学习和神经网络学习、github学习和维护 | manual | 1d | 2017-04-07 A | 2017-04-07 A |  | 100% |  | 2017-04-07 | 2017-04-07 |  | 付强 [25%] | 2h | 2h |
| 71 | 5.4 | 上课 | manual | 0.25d | 2017-04-07 A | 2017-04-07 A |  | 100% |  | 2017-04-07 | 2017-04-07 |  | 曹进 [25%]; 陈伟民 [25%]; 付强 [25%]; 李恬霖 [25%] | 8h | 8h |
| 72 | 5.5 | **组间需求评审** |  | 2d | 2017-04-08 A | 2017-04-10 | 71 | 100% | 2017-04-09 | 2017-04-08 | 2017-04-09 |  |  | 16h | 16h |
| 73 | 5.5.1 | E组需求分析书格式评审 | manual | 1d | 2017-04-08 A | 2017-04-08 A |  | 100% |  | 2017-04-08 | 2017-04-08 |  | 陈伟民 [25%] | 2h | 2h |
| 74 | 5.5.2 | E组需求分析书功能性需求评审 | manual | 1d | 2017-04-08 A | 2017-04-08 A |  | 100% |  | 2017-04-08 | 2017-04-08 |  | 付强 [25%] | 2h | 2h |
| 75 | 5.5.3 | E组需求分析书非功能性需求评审 | manual | 1d | 2017-04-08 A | 2017-04-08 A |  | 100% |  | 2017-04-08 | 2017-04-08 |  | 李恬霖 [25%] | 2h | 2h |
| 76 | 5.5.4 | E组RUCM和用例评审 | manual | 1d | 2017-04-08 A | 2017-04-08 A |  | 100% |  | 2017-04-08 | 2017-04-08 |  | 陈伟民 [25%] | 2h | 2h |
| 77 | 5.5.5 | F组需求分析书格式评审 | manual | 1d | 2017-04-09 A | 2017-04-09 A |  | 100% |  | 2017-04-09 | 2017-04-09 |  | 陈伟民 [25%] | 2h | 2h |
| 78 | 5.5.6 | F组需求分析书功能性需求评审 | manual | 1d | 2017-04-09 A | 2017-04-09 A |  | 100% |  | 2017-04-09 | 2017-04-09 |  | 付强 [25%] | 2h | 2h |
| 79 | 5.5.7 | F组需求分析书非功能性需求评审 | manual | 1d | 2017-04-09 A | 2017-04-09 A |  | 100% |  | 2017-04-09 | 2017-04-09 |  | 李恬霖 [25%] | 2h | 2h |
| 80 | 5.5.8 | F组RUCM和用例评审 | manual | 1d | 2017-04-09 A | 2017-04-09 A |  | 100% |  | 2017-04-09 | 2017-04-09 |  | 曹进 [25%] | 2h | 2h |
| 81 | 6 | **项目需求评审与修改** |  | 5d | 2017-04-10 A | 2017-04-14 A |  | 100% |  | 2017-04-10 | 2017-04-14 |  |  | 48h | 48h |
| 82 | 6.1 | **需求改进和任务布置** |  | 1d | 2017-04-10 A | 2017-04-10 A |  | 100% |  | 2017-04-10 | 2017-04-10 |  |  | 8h | 8h |
| 83 | 6.1.1 | 修改RUCM和更新project | manual | 1d | 2017-04-10 A | 2017-04-10 A | 72 | 100% |  | 2017-04-10 | 2017-04-10 |  | 曹进 [25%] | 2h | 2h |
| 84 | 6.1.2 | 统计评审意见和github维护 | manual | 1d | 2017-04-10 A | 2017-04-10 A | 72 | 100% |  | 2017-04-10 | 2017-04-10 |  | 付强 [25%] | 2h | 2h |
| 85 | 6.1.3 | 调整文档“功能分析”内容和格式 | manual | 1d | 2017-04-10 A | 2017-04-10 A | 72 | 100% |  | 2017-04-10 | 2017-04-10 |  | 李恬霖 [25%] | 2h | 2h |
| 86 | 6.1.4 | 文档内容审核和文档整理 | manual | 1d | 2017-04-10 A | 2017-04-10 A | 72 | 100% |  | 2017-04-10 | 2017-04-10 | finish no earlier than 2017-04-10 | 陈伟民 [25%] | 2h | 2h |

| ID | WBS | Task | Type | Duration | Start | Finish | Predecessors | Complete | Baseline 1 start | Baseline 1 finish | Resources | Work | Actual work |
| --- | --- | --- | --- | --- | --- | --- | --- | --- | --- | --- | --- | --- | --- |
| 87 | 6.2 | **完成一周工作** |  | 4d | 2017-04-11 A | 2017-04-14 A | 82 | 100% | 2017-04-11 | 2017-04-14 |  | 32h | 32h |
| 88 | 6.2.1 | 整理会议记录和学习torch源码 | manual | 4d | 2017-04-11 A | 2017-04-14 A |  | 100% | 2017-04-11 | 2017-04-14 | 曹进 [25%] | 8h | 8h |
| 89 | 6.2.2 | 整理文档和学习torch源码 | manual | 4d | 2017-04-11 A | 2017-04-14 A |  | 100% | 2017-04-11 | 2017-04-14 | 付强 [25%] | 8h | 8h |
| 90 | 6.2.3 | 整理需求评审文档和学习torch源码 | manual | 4d | 2017-04-11 A | 2017-04-14 A |  | 100% | 2017-04-11 | 2017-04-14 | 李恬霖 [25%] | 8h | 8h |
| 91 | 6.2.4 | 学习torch源码和项目ppt制作 | manual | 4d | 2017-04-11 A | 2017-04-14 A |  | 100% | 2017-04-11 | 2017-04-14 | 陈伟民 [25%] | 8h | 8h |
| 92 | 6.3 | 上课 | manual | 1d | 2017-04-14 A | 2017-04-14 A |  | 100% | 2017-04-14 | 2017-04-14 | 曹进 [25%]; 陈伟民 [25%]; 付强 [25%]; 李恬霖 [25%] | 8h | 8h |
| 93 | 7 | **项目需求复评审** |  | 5d | 2017-04-17 A | 2017-04-21 A |  | 100% | 2017-04-17 | 2017-04-21 |  | 48h | 48h |
| 94 | 7.1 | 确定实验一、二的目标 | manual | 1d | 2017-04-17 A | 2017-04-17 A | 92 | 100% | 2017-04-17 | 2017-04-17 | 曹进 [25%] | 2h | 2h |
| 95 | 7.2 | 确定实验三目标，学习Torch源码 | manual | 1d | 2017-04-17 A | 2017-04-17 A | 92 | 100% | 2017-04-17 | 2017-04-17 | 付强 [25%] | 2h | 2h |
| 96 | 7.3 | 确定实验四、实验五目标 | manual | 1d | 2017-04-17 A | 2017-04-17 A | 92 | 100% | 2017-04-17 | 2017-04-17 | 李恬霖 [25%] | 2h | 2h |
| 97 | 7.4 | 描述实验六、实验七目标 | manual | 1d | 2017-04-17 A | 2017-04-17 A | 92 | 100% | 2017-04-17 | 2017-04-17 | 陈伟民 [25%] | 2h | 2h |
| 98 | 7.5 | 修改用例和增加两个RUCM | manual | 1d | 2017-04-18 A | 2017-04-18 A |  | 100% | 2017-04-18 | 2017-04-18 | 曹进 [25%] | 2h | 2h |
| 99 | 7.6 | 学习Torch源码 | manual | 1d | 2017-04-18 A | 2017-04-18 A |  | 100% | 2017-04-18 | 2017-04-18 | 付强 [25%] | 2h | 2h |
| 100 | 7.7 | 审核需求分析文档和学习Torch源码 | manual | 1d | 2017-04-18 A | 2017-04-18 A |  | 100% | 2017-04-18 | 2017-04-18 | 李恬霖 [25%] | 2h | 2h |
| 101 | 7.8 | 审核实验一至实验七的目标文档和学习Torch源码 | manual | 1d | 2017-04-18 A | 2017-04-18 A | 94, 95, 96, 97 | 100% | 2017-04-18 | 2017-04-18 | 陈伟民 [25%] | 2h | 2h |
| 102 | 7.9 | 需求分析组间评审 | manual | 1d | 2017-04-19 A | 2017-04-19 A |  | 100% | 2017-04-19 | 2017-04-19 | 曹进 [25%] | 2h | 2h |
| 103 | 7.10 | 需求分析组间评审和评审整理 | manual | 1d | 2017-04-19 A | 2017-04-19 A |  | 100% | 2017-04-19 | 2017-04-19 | 陈伟民 [25%] | 2h | 2h |
| 104 | 7.11 | 需求分析组间评审 | manual | 1d | 2017-04-19 A | 2017-04-19 A |  | 100% | 2017-04-19 | 2017-04-19 | 付强 [25%] | 2h | 2h |
| 105 | 7.12 | 需求分析组间评审和评审整理 | manual | 1d | 2017-04-19 A | 2017-04-19 A |  | 100% | 2017-04-19 | 2017-04-19 | 李恬霖 [25%] | 2h | 2h |
| 106 | 7.13 | 讨论Torch项目扩展方向 | manual | 1d | 2017-04-20 A | 2017-04-20 A |  | 100% | 2017-04-20 | 2017-04-20 | 曹进 [25%]; 陈伟民 [25%]; 付强 [25%]; 李恬霖 [25%] | 8h | 8h |
| 107 | 7.14 | Torch源码学习 | manual | 1d | 2017-04-21 A | 2017-04-21 A | 106 | 100% | 2017-04-21 | 2017-04-21 | 曹进 [25%] | 2h | 2h |
| 108 | 7.15 | Torch源码学习 | manual | 1d | 2017-04-21 A | 2017-04-21 A | 106 | 100% | 2017-04-21 | 2017-04-21 | 陈伟民 [25%] | 2h | 2h |
| 109 | 7.16 | Torch源码学习 | manual | 1d | 2017-04-21 A | 2017-04-21 A | 106 | 100% | 2017-04-21 | 2017-04-21 | 付强 [25%] | 2h | 2h |
| 110 | 7.17 | Torch源码学习 | manual | 1d | 2017-04-21 A | 2017-04-21 A | 106 | 100% | 2017-04-21 | 2017-04-21 | 李恬霖 [25%] | 2h | 2h |
| 111 | 7.18 | 上课(需求评审和实验八展示) | manual | 1d | 2017-04-21 A | 2017-04-21 A |  | 100% | 2017-04-21 | 2017-04-21 | 曹进 [25%]; 陈伟民 [25%]; 付强 [25%]; 李恬霖 [25%] | 8h | 8h |

| ID | WBS | Task | Type | Duration | Start | Finish | Predecessors | Complete | Baseline 1 start | Baseline 1 finish | Resources | Work | Actual work |
| --- | --- | --- | --- | --- | --- | --- | --- | --- | --- | --- | --- | --- | --- |
| 112 | 8 | **软件产品改进实验** |  | 15d | 2017-04-24 A | 2017-05-12 A |  | 100% | 2017-04-24 | 2017-05-12 |  | 152h | 152h |
| 113 | 8.1 | **需求评审、改进和软件产品第一次改进** |  | 5d | 2017-04-24 A | 2017-04-28 A |  | 100% | 2017-04-24 | 2017-04-28 |  | 64h | 64h |
| 114 | 8.1.1 | 学习Torch源码、设计神经网络改进方案 | manual | 1d | 2017-04-24 A | 2017-04-24 A |  | 100% | 2017-04-24 | 2017-04-24 | 曹进 [25%] | 2h | 2h |
| 115 | 8.1.2 | 学习Torch源码、设计神经网络改进方案 | manual | 1d | 2017-04-24 A | 2017-04-24 A |  | 100% | 2017-04-24 | 2017-04-24 | 陈伟民 [25%] | 2h | 2h |
| 116 | 8.1.3 | 学习Torch源码、设计神经网络改进方案 | manual | 1d | 2017-04-24 A | 2017-04-24 A |  | 100% | 2017-04-24 | 2017-04-24 | 付强 [25%] | 2h | 2h |
| 117 | 8.1.4 | 学习Torch源码、设计神经网络改进方案 | manual | 1d | 2017-04-24 A | 2017-04-24 A |  | 100% | 2017-04-24 | 2017-04-24 | 李恬霖 [25%] | 2h | 2h |
| 118 | 8.1.5 | 对E组需求分析进行评审 | manual | 1d | 2017-04-24 A | 2017-04-24 A |  | 100% | 2017-04-24 | 2017-04-24 | 曹进 [25%]; 陈伟民 [25%]; 付强 [25%]; 李恬霖 [25%] | 8h | 8h |
| 119 | 8.1.6 | 对F组需求分析进行评审 | manual | 1d | 2017-04-25 A | 2017-04-25 A |  | 100% | 2017-04-25 | 2017-04-25 | 曹进 [25%]; 陈伟民 [25%]; 付强 [25%]; 李恬霖 [25%] | 8h | 8h |
| 120 | 8.1.7 | 根据评审意见对需求分析进行修改 | manual | 1d | 2017-04-26 A | 2017-04-26 A |  | 100% | 2017-04-26 | 2017-04-26 | 曹进 [25%]; 陈伟民 [25%]; 付强 [25%]; 李恬霖 [25%] | 8h | 8h |
| 121 | 8.1.8 | 根据设计方案，阅读源码 | manual | 3d | 2017-04-25 A | 2017-04-27 A | 114, 115, 116, 117 | 100% | 2017-04-26 | 2017-04-27 | 曹进 [25%]; 付强 [25%]; 李恬霖 [25%] | 18h | 18h |
| 122 | 8.1.9 | 根据设计方案，阅读源码 | manual | 3d | 2017-04-25 A | 2017-04-27 A | 114, 115, 116, 117 | 100% | 2017-04-26 | 2017-04-28 | 曹进 [25%] | 6h | 6h |
| 123 | 8.1.10 | 上课 | manual | 1d | 2017-04-28 A | 2017-04-28 A |  | 100% | 2017-04-28 | 2017-04-28 | 曹进 [25%]; 陈伟民 [25%]; 付强 [25%]; 李恬霖 [25%] | 8h | 8h |
| 124 | 8.2 | **软件产品第二次改进** |  | 5d | 2017-05-01 A | 2017-05-05 A | 113 | 100% | 2017-05-01 | 2017-05-05 |  | 48h | 48h |
| 125 | 8.2.1 | 阅读Torch全连接层、卷积层的源码 | manual | 1d | 2017-05-01 A | 2017-05-01 A |  | 100% | 2017-05-01 | 2017-05-01 | 曹进 [25%] | 2h | 2h |
| 126 | 8.2.2 | 阅读Torch全连接层、卷积层的源码 | manual | 1d | 2017-05-01 A | 2017-05-01 A |  | 100% | 2017-05-01 | 2017-05-01 | 陈伟民 [25%] | 2h | 2h |
| 127 | 8.2.3 | 阅读Torch全连接层、卷积层的源码 | manual | 1d | 2017-05-01 A | 2017-05-01 A |  | 100% | 2017-05-01 | 2017-05-01 | 付强 [25%] | 2h | 2h |
| 128 | 8.2.4 | 阅读Torch全连接层、卷积层的源码 | manual | 1d | 2017-05-01 A | 2017-05-01 A |  | 100% | 2017-05-01 | 2017-05-01 | 李恬霖 [25%] | 2h | 2h |
| 129 | 8.2.5 | 需求分析说明书修改 | manual | 1d | 2017-05-02 A | 2017-05-02 A |  | 100% | 2017-05-02 | 2017-05-02 | 曹进 [25%]; 陈伟民 [25%]; 付强 [25%]; 李恬霖 [25%] | 8h | 8h |
| 130 | 8.2.6 | 全连接层、卷积层随机P激活函数y=x修改 | manual | 4d | 2017-05-02 A | 2017-05-05 A | 125 | 100% | 2017-05-02 | 2017-05-05 | 曹进 [25%] | 8h | 8h |
| 131 | 8.2.7 | 全连接层、卷积层随机P激活函数y=x修改 | manual | 4d | 2017-05-02 A | 2017-05-05 A | 126 | 100% | 2017-05-02 | 2017-05-05 | 付强 [25%] | 8h | 8h |
| 132 | 8.2.8 | 全连接层、卷积层随机P激活函数Htanh修改、课堂ppt准备 | manual | 4d | 2017-05-02 A | 2017-05-05 A | 127 | 100% | 2017-05-02 | 2017-05-05 | 陈伟民 [25%] | 8h | 8h |
| 133 | 8.2.9 | 全连接层、卷积层随机P激活函数Htanh修改 | manual | 4d | 2017-05-02 A | 2017-05-05 A | 128 | 100% | 2017-05-02 | 2017-05-05 | 李恬霖 [25%] | 8h | 8h |
| 134 | 8.3 | **软件产品第三次改进** |  | 5d | 2017-05-08 A | 2017-05-12 A | 124 | 100% | 2017-05-08 | 2017-05-12 |  | 40h | 40h |
| 135 | 8.3.1 | 阅读Torch全连接层、卷积层的源码 | manual | 1d | 2017-05-08 A | 2017-05-08 A |  | 100% | 2017-05-08 | 2017-05-08 | 曹进 [25%] | 2h | 2h |
| 136 | 8.3.2 | 阅读Torch全连接层、卷积层的源码 | manual | 1d | 2017-05-08 A | 2017-05-08 A |  | 100% | 2017-05-08 | 2017-05-08 | 陈伟民 [25%] | 2h | 2h |
| 137 | 8.3.3 | 阅读Torch全连接层、卷积层的源码 | manual | 1d | 2017-05-08 A | 2017-05-08 A |  | 100% | 2017-05-08 | 2017-05-08 | 付强 [25%] | 2h | 2h |
| 138 | 8.3.4 | 阅读Torch全连接层、卷积层的源码 | manual | 1d | 2017-05-08 A | 2017-05-08 A |  | 100% | 2017-05-08 | 2017-05-08 | 李恬霖 [25%] | 2h | 2h |
| 139 | 8.3.5 | 全连接层、卷积层训练P激活函数y=x修改 | manual | 4d | 2017-05-09 A | 2017-05-12 A | 135 | 100% | 2017-05-09 | 2017-05-12 | 曹进 [25%] | 8h | 8h |
| 140 | 8.3.6 | 全连接层、卷积层训练P激活函数y=x修改 | manual | 4d | 2017-05-09 A | 2017-05-12 A | 136 | 100% | 2017-05-09 | 2017-05-12 | 付强 [25%] | 8h | 8h |
| 141 | 8.3.7 | 全连接层、卷积层训练P激活函数Htanh修改、课堂ppt准备 | manual | 4d | 2017-05-09 A | 2017-05-12 A | 137 | 100% | 2017-05-09 | 2017-05-12 | 陈伟民 [25%] | 8h | 8h |
| 142 | 8.3.8 | 全连接层、卷积层训练P激活函数Htanh修改 | manual | 4d | 2017-05-09 A | 2017-05-12 A | 138 | 100% | 2017-05-09 | 2017-05-12 | 李恬霖 [25%] | 8h | 8h |

| ID | WBS | Task | Type | Duration | Start | Finish | Predecessors | Complete | Remaining | Actual start | Baseline 1 start | Baseline 1 finish | Resources | Work | Actual work |
| --- | --- | --- | --- | --- | --- | --- | --- | --- | --- | --- | --- | --- | --- | --- | --- |
| 143 | 9 | **软件测试分析** |  | 5d | 2017-05-15 | 2017-05-19 |  |  |  |  | 2017-05-15 | 2017-05-19 |  | 40h |  |
| 144 | 9.1 | 测试需求分析 | manual | 5d | 2017-05-15 | 2017-05-19 |  |  |  |  | 2017-05-15 | 2017-05-19 | 曹进 [25%]; 陈伟民 [25%]; 李恬霖 [25%]; 付强 [25%] | 40h |  |
| 145 | 10 | **软件测试评审** |  | 5d | 2017-05-22 | 2017-05-26 | 144 |  |  |  | 2017-05-22 | 2017-05-26 |  | 40h |  |
| 146 | 10.1 | 修改测试需求 | manual | 5d | 2017-05-22 | 2017-05-26 |  |  |  |  | 2017-05-22 | 2017-05-26 | 曹进 [25%]; 陈伟民 [25%]; 李恬霖 [25%]; 付强 [25%] | 40h |  |
| 147 | 11 | **软件测试复评审** |  | 5d | 2017-05-29 | 2017-06-02 | 146 |  |  |  | 2017-05-29 | 2017-06-02 |  | 40h |  |
| 148 | 11.1 | 确定测试需求 | manual | 5d | 2017-05-29 | 2017-06-02 |  |  |  |  | 2017-05-29 | 2017-06-02 | 曹进 [25%]; 陈伟民 [25%]; 李恬霖 [25%]; 付强 [25%] | 40h |  |
| 149 | 12 | 软件演示与测评 | manual | 5d | 2017-06-05 | 2017-06-09 | 148 |  |  |  | 2017-06-05 | 2017-06-09 | 曹进 [25%]; 陈伟民 [25%]; 李恬霖 [25%]; 付强 [25%] | 40h |  |
| 150 | 13 | 综合实验分析 | manual | 5d | 2017-06-12 | 2017-06-16 | 149 |  |  |  | 2017-06-12 | 2017-06-16 | 曹进 [25%]; 陈伟民 [25%]; 李恬霖 [25%]; 付强 [25%] | 40h |  |
| 151 | 14 | 综合实验总结 | manual | 5d | 2017-06-19 | 2017-06-23 | 150 |  |  |  | 2017-06-19 | 2017-06-23 | 曹进 [25%]; 陈伟民 [25%]; 李恬霖 [25%]; 付强 [25%] | 40h |  |
| 152 | 15 | **软件进度计划与控制** |  | 75d | 2017-03-14 | 2017-06-24 |  | 60% | 30d | 2017-03-13 | 2017-03-12 | 2017-06-24 |  | 120h | 72h |
| 153 | 15.1 | 第三周组会 | manual | 1d | 2017-03-13 A | 2017-03-13 A |  | 100% |  |  | 2017-03-13 | 2017-03-13 | 曹进 [25%]; 陈伟民 [25%]; 付强 [25%]; 李恬霖 [25%] | 8h | 8h |
| 154 | 15.2 | 第四周组会 | manual | 1d | 2017-03-20 A | 2017-03-20 A |  | 100% |  |  | 2017-03-20 | 2017-03-20 | 曹进 [25%]; 陈伟民 [25%]; 付强 [25%]; 李恬霖 [25%] | 8h | 8h |
| 155 | 15.3 | 第五周组会 | manual | 1d | 2017-03-27 A | 2017-03-27 A |  | 100% |  |  | 2017-03-27 | 2017-03-27 | 陈伟民 [25%]; 付强 [25%]; 李恬霖 [25%]; 曹进 [25%] | 8h | 8h |
| 156 | 15.4 | 第六周组会 | manual | 1d | 2017-04-03 A | 2017-04-03 A |  | 100% |  |  | 2017-04-03 | 2017-04-03 | 陈伟民 [25%]; 付强 [25%]; 李恬霖 [25%]; 曹进 [25%] | 8h | 8h |
| 157 | 15.5 | 第七周组会 | manual | 1d | 2017-04-10 A | 2017-04-10 A |  | 100% |  |  | 2017-04-10 | 2017-04-10 | 陈伟民 [25%]; 付强 [25%]; 李恬霖 [25%]; 曹进 [25%] | 8h | 8h |
| 158 | 15.6 | 第八周组会 | manual | 1d | 2017-04-17 A | 2017-04-17 A |  | 100% |  |  | 2017-04-17 | 2017-04-17 | 曹进 [25%]; 陈伟民 [25%]; 付强 [25%]; 李恬霖 [25%] | 8h | 8h |
| 159 | 15.7 | 第九周组会 | manual | 1d | 2017-04-24 A | 2017-04-24 A |  | 100% |  |  | 2017-04-24 | 2017-04-24 | 曹进 [25%]; 陈伟民 [25%]; 付强 [25%]; 李恬霖 [25%] | 8h | 8h |
| 160 | 15.8 | 第十周组会 | manual | 1d | 2017-05-02 A | 2017-05-02 A |  | 100% |  |  | 2017-05-01 | 2017-05-01 | 曹进 [25%]; 陈伟民 [25%]; 付强 [25%]; 李恬霖 [25%] | 8h | 8h |
| 161 | 15.9 | 第十一周组会 | manual | 1d | 2017-05-08 A | 2017-05-08 A |  | 100% |  |  | 2017-05-08 | 2017-05-08 | 曹进 [25%]; 陈伟民 [25%]; 付强 [25%]; 李恬霖 [25%] | 8h | 8h |
| 162 | 15.10 | 第十二周组会 | manual | 1d | 2017-05-15 | 2017-05-15 |  |  |  |  | 2017-05-15 | 2017-05-15 | 曹进 [25%]; 陈伟民 [25%]; 付强 [25%]; 李恬霖 [25%] | 8h |  |
| 163 | 15.11 | 第十三周组会 | manual | 1d | 2017-05-22 | 2017-05-22 |  |  |  |  | 2017-05-22 | 2017-05-22 | 曹进 [25%]; 陈伟民 [25%]; 付强 [25%]; 李恬霖 [25%] | 8h |  |
| 164 | 15.12 | 第十四周组会 | manual | 1d | 2017-05-29 | 2017-05-29 |  |  |  |  | 2017-05-29 | 2017-05-29 | 曹进 [25%]; 陈伟民 [25%]; 付强 [25%]; 李恬霖 [25%] | 8h |  |
| 165 | 15.13 | 第十五周组会 | manual | 1d | 2017-06-05 | 2017-06-05 |  |  |  |  | 2017-06-05 | 2017-06-05 | 曹进 [25%]; 陈伟民 [25%]; 付强 [25%]; 李恬霖 [25%] | 8h |  |
| 166 | 15.14 | 第十六周组会 | manual | 1d | 2017-06-12 | 2017-06-12 |  |  |  |  | 2017-06-12 | 2017-06-12 | 曹进 [25%]; 陈伟民 [25%]; 付强 [25%]; 李恬霖 [25%] | 8h |  |
| 167 | 15.15 | 第十七周组会 | manual | 1d | 2017-06-19 | 2017-06-19 |  |  |  |  | 2017-06-19 | 2017-06-19 | 曹进 [25%]; 陈伟民 [25%]; 付强 [25%]; 李恬霖 [25%] | 8h |  |

| ID | WBS | Task | Type | Duration | Start | Finish | Complete | Remaining | Baseline 1 start | Baseline 1 finish | Resources | Work | Actual work |
| --- | --- | --- | --- | --- | --- | --- | --- | --- | --- | --- | --- | --- | --- |
| 168 | 16 | **工作量估计与统计分析** |  | 75d | 2017-03-13 A | 2017-06-23 | 60% | 30d | 2017-03-13 | 2017-06-23 |  | 12h | 7.2h |
| 169 | 16.1 | 项目计划书拟定project计划 | manual | 5d | 2017-03-13 A | 2017-03-17 A | 100% |  | 2017-03-13 | 2017-03-17 | 曹进 [2%] | 0.8h | 0.8h |
| 170 | 16.2 | 项目需求编写project计划 | manual | 5d | 2017-03-20 A | 2017-03-24 A | 100% |  | 2017-03-20 | 2017-03-24 | 曹进 [2%] | 0.8h | 0.8h |
| 171 | 16.3 | 项目需求评审project计划 | manual | 5d | 2017-03-27 A | 2017-03-31 A | 100% |  | 2017-03-27 | 2017-03-31 | 曹进 [2%] | 0.8h | 0.8h |
| 172 | 16.4 | 项目需求修改project计划 | manual | 5d | 2017-04-03 A | 2017-04-07 A | 100% |  | 2017-04-03 | 2017-04-07 | 曹进 [2%] | 0.8h | 0.8h |
| 173 | 16.5 | 项目需求评审与修改project计划 | manual | 5d | 2017-04-10 A | 2017-04-14 A | 100% |  | 2017-04-10 | 2017-04-14 | 曹进 [2%] | 0.8h | 0.8h |
| 174 | 16.6 | 项目需求复评审project计划 | manual | 5d | 2017-04-17 A | 2017-04-21 A | 100% |  | 2017-04-17 | 2017-04-21 | 曹进 [2%] | 0.8h | 0.8h |
| 175 | 16.7 | **软件产品改进project计划** |  | 15d | 2017-04-24 A | 2017-05-12 A | 100% |  | 2017-04-24 | 2017-05-12 |  | 2.4h | 2.4h |
| 176 | 16.7.1 | 软件产品第一次改进作业project计划 | manual | 5d | 2017-04-24 A | 2017-04-28 A | 100% |  | 2017-04-24 | 2017-04-28 | 曹进 [2%] | 0.8h | 0.8h |
| 177 | 16.7.2 | 软件产品第二次改进作业project计划 | manual | 5d | 2017-05-01 A | 2017-05-05 A | 100% |  | 2017-05-01 | 2017-05-05 | 曹进 [2%] | 0.8h | 0.8h |
| 178 | 16.7.3 | 软件产品第三次改进作业project计划 | manual | 5d | 2017-05-08 A | 2017-05-12 A | 100% |  | 2017-05-08 | 2017-05-12 | 曹进 [2%] | 0.8h | 0.8h |
| 179 | 16.8 | 软件测试分析实验project计划 | manual | 5d | 2017-05-15 | 2017-05-19 |  |  | 2017-05-15 | 2017-05-19 | 曹进 [2%] | 0.8h |  |
| 180 | 16.9 | 软件测试评审实验project计划 | manual | 5d | 2017-05-22 | 2017-05-26 |  |  | 2017-05-22 | 2017-05-26 | 曹进 [2%] | 0.8h |  |
| 181 | 16.10 | 软件测试复评审实验project计划 | manual | 5d | 2017-05-29 | 2017-06-02 |  |  | 2017-05-29 | 2017-06-02 | 曹进 [2%] | 0.8h |  |
| 182 | 16.11 | 软件演示与测评实验project计划 | manual | 5d | 2017-06-05 | 2017-06-09 |  |  | 2017-06-05 | 2017-06-09 | 曹进 [2%] | 0.8h |  |
| 183 | 16.12 | 综合实验分析project计划 | manual | 5d | 2017-06-12 | 2017-06-16 |  |  | 2017-06-12 | 2017-06-16 | 曹进 [2%] | 0.8h |  |
| 184 | 16.13 | 综合实验总结project计划 | manual | 5d | 2017-06-19 | 2017-06-23 |  |  | 2017-06-19 | 2017-06-23 | 曹进 [2%] | 0.8h |  |
| 185 | 17 | **配置管理** |  | 75d | 2017-03-13 A | 2017-06-23 | 60% | 30d | 2017-03-13 | 2017-06-23 |  | 12h | 7.2h |
| 186 | 17.1 | 项目计划书拟定配置管理 | manual | 5d | 2017-03-13 A | 2017-03-17 A | 100% |  | 2017-03-13 | 2017-03-17 | 付强 [2%] | 0.8h | 0.8h |
| 187 | 17.2 | 项目需求编写配置管理 | manual | 5d | 2017-03-20 A | 2017-03-24 A | 100% |  | 2017-03-20 | 2017-03-24 | 付强 [2%] | 0.8h | 0.8h |
| 188 | 17.3 | 项目需求评审配置管理 | manual | 5d | 2017-03-27 A | 2017-03-31 A | 100% |  | 2017-03-27 | 2017-03-31 | 付强 [2%] | 0.8h | 0.8h |
| 189 | 17.4 | 项目需求修改配置管理 | manual | 5d | 2017-04-03 A | 2017-04-07 A | 100% |  | 2017-04-03 | 2017-04-07 | 付强 [2%] | 0.8h | 0.8h |
| 190 | 17.5 | 项目需求评审与修改配置管理 | manual | 5d | 2017-04-10 A | 2017-04-14 A | 100% |  | 2017-04-10 | 2017-04-14 | 付强 [2%] | 0.8h | 0.8h |
| 191 | 17.6 | 项目需求复评审配置管理 | manual | 5d | 2017-04-17 A | 2017-04-21 A | 100% |  | 2017-04-17 | 2017-04-21 | 付强 [2%] | 0.8h | 0.8h |

| ID | WBS | Task | Type | Duration | Start | Finish | Complete | Baseline 1 start | Baseline 1 finish | Resources | Work | Actual work |
| --- | --- | --- | --- | --- | --- | --- | --- | --- | --- | --- | --- | --- |
| 192 | 17.7 | **软件产品改进配置管理** |  | 15d | 2017-04-24 A | 2017-05-12 A | 100% | 2017-04-24 | 2017-05-12 |  | 2.4h | 2.4h |
| 193 | 17.7.1 | 软件产品第一次改进配置管理 | manual | 5d | 2017-04-24 A | 2017-04-28 A | 100% | 2017-04-24 | 2017-04-28 | 付强 [2%] | 0.8h | 0.8h |
| 194 | 17.7.2 | 软件产品第二次改进配置管理 | manual | 5d | 2017-05-01 A | 2017-05-05 A | 100% | 2017-05-01 | 2017-05-05 | 付强 [2%] | 0.8h | 0.8h |
| 195 | 17.7.3 | 软件产品第三次改进配置管理 | manual | 5d | 2017-05-08 A | 2017-05-12 A | 100% | 2017-05-08 | 2017-05-12 | 付强 [2%] | 0.8h | 0.8h |
| 196 | 17.8 | 软件测试分析实验配置管理 | manual | 5d | 2017-05-15 | 2017-05-19 |  | 2017-05-15 | 2017-05-19 | 付强 [2%] | 0.8h |  |
| 197 | 17.9 | 软件测试评审实验配置管理 | manual | 5d | 2017-05-22 | 2017-05-26 |  | 2017-05-22 | 2017-05-26 | 付强 [2%] | 0.8h |  |
| 198 | 17.10 | 软件测试复评审实验配置管理 | manual | 5d | 2017-05-29 | 2017-06-02 |  | 2017-05-29 | 2017-06-02 | 付强 [2%] | 0.8h |  |
| 199 | 17.11 | 软件演示与测评实验配置管理 | manual | 5d | 2017-06-05 | 2017-06-09 |  | 2017-06-05 | 2017-06-09 | 付强 [2%] | 0.8h |  |
| 200 | 17.12 | 综合实验分析配置管理 | manual | 5d | 2017-06-12 | 2017-06-16 |  | 2017-06-12 | 2017-06-16 | 付强 [2%] | 0.8h |  |
| 201 | 17.13 | 综合实验总结配置管理 | manual | 5d | 2017-06-19 | 2017-06-23 |  | 2017-06-19 | 2017-06-23 | 付强 [2%] | 0.8h |  |
